# Development of an ultra-wide band indoor positioning system

How a schedule from GanttProject changed from version to version. A marks actual dates.

## Version 1 (saved 2017-09-25)

Note of the change: Add gantt diagram

| ID | Task | Duration | Start | Finish | Predecessors | Complete |
| --- | --- | --- | --- | --- | --- | --- |
| 1 | Début projet | 0d | 2017-09-19 | 2017-09-19 |  |  |
| 2 | State of the art | 15d | 2017-09-19 | 2017-10-09 | 1 |  |
| 3 | Design algorithme | 10d | 2017-10-10 | 2017-10-23 | 2 |  |
| 4 | Simulation algorithme choisi | 15d | 2017-10-24 | 2017-11-13 | 3 |  |
| 5 | Driver IMU | 5d | 2017-09-19 | 2017-09-25 | 1 | 100% |
| 6 | Communication CAN | 4d | 2017-09-26 | 2017-09-29 |  |  |
| 7 | Driver DWM1000 | 5d | 2017-10-02 | 2017-10-06 |  |  |
| 8 | Ranging protocol | 20d | 2017-10-09 | 2017-11-03 | 7 |  |
| 9 | Collecte data | 5d | 2017-11-06 | 2017-11-10 | 5, 6, 8 |  |
| 10 | Test algos sur vrai data | 5d | 2017-11-14 | 2017-11-20 | 4, 9 |  |
| 11 | Port algorithmes | 15d | 2017-11-21 | 2017-12-11 | 10 |  |
| 12 | Tests | 5d | 2017-12-12 | 2017-12-18 | 11 |  |
| 13 | Ecriture rapport | 5d | 2018-01-08 | 2018-01-12 |  |  |
| 14 | Rendu rapport | 0d | 2018-01-15 | 2018-01-15 | 13 |  |

## Version 2 (saved 2017-09-28)

Note of the change: Update planning

Last finish stays 2018-01-15. Complete tasks 1 → 2.

Added:

| ID | Task | Duration | Start | Finish |
| --- | --- | --- | --- | --- |
| 9 | Param storage | 1d | 2017-11-03 | 2017-11-03 |

Changed:

| ID | Task | Complete | Predecessors |
| --- | --- | --- | --- |
| 2 | State of the art | 0% → 25% |  |
| 6 | Communication CAN | 0% → 100% |  |
| 10 | Collecte data |  | 5, 6, 8 → 5, 6, 8, 9 |

## Version 3 (saved 2017-09-29)

Note of the change: add DMP task

Last finish stays 2018-01-15.

Added:

| ID | Task | Duration | Start | Finish |
| --- | --- | --- | --- | --- |
| 5 | Test DMP | 3d | 2017-09-28 | 2017-10-02 |

Changed:

| ID | Task | Predecessors |
| --- | --- | --- |
| 4 | Simulation algorithme choisi | 3 → 3, 5 |

## Version 4 (saved 2017-09-29)

Note of the change: Update planning with my current progress

Last finish stays 2018-01-15.

Changed:

| ID | Task | Complete |
| --- | --- | --- |
| 2 | State of the art | 25% → 60% |
| 3 | Design algorithme | 0% → 10% |
| 4 | Simulation algorithme choisi | 0% → 10% |
| 5 | Test DMP | 0% → 20% |

## Version 5 (saved 2017-09-30)

Note of the change: Update planning

Last finish stays 2018-01-15.

Changed:

| ID | Task | Complete |
| --- | --- | --- |
| 3 | Design algorithme | 10% → 25% |
| 4 | Simulation algorithme choisi | 10% → 25% |

## Version 6 (saved 2017-10-04)

Note of the change: Update planning

Last finish stays 2018-01-15.

Changed:

| ID | Task | Complete |
| --- | --- | --- |
| 4 | Simulation algorithme choisi | 25% → 50% |
| 11 | Collecte data | 0% → 10% |

## Version 7 (saved 2017-10-10)

Note of the change: Add second iteration to the planning

Last finish 2018-01-15 → 2018-01-03 (-12d). Complete tasks 2 → 3.

Added:

| ID | Task | Duration | Start | Finish | Predecessors |
| --- | --- | --- | --- | --- | --- |
| 15 | Présentation intermédiaire | 0d | 2017-11-15 | 2017-11-15 |  |
| 16 | Seconde itération algo | 15d | 2017-11-20 | 2017-12-08 | 14 |

Changed:

| ID | Task | Start | Finish | Duration | Complete |
| --- | --- | --- | --- | --- | --- |
| 3 | Design algorithme |  | 2017-10-23 → 2017-10-13 (-10d) | 10d → 4d | 25% → 100% |
| 4 | Simulation algorithme choisi | 2017-10-24 → 2017-10-16 (-8d) | 2017-11-13 → 2017-10-25 (-19d) | 15d → 8d | 50% → 75% |
| 8 | Driver DWM1000 |  |  |  | 0% → 30% |
| 9 | Param storage | 2017-11-03 → 2017-10-20 (-14d) | 2017-11-03 → 2017-10-20 (-14d) |  |  |
| 10 | Ranging protocol |  | 2017-11-03 → 2017-10-20 (-14d) | 20d → 10d |  |
| 11 | Collecte data | 2017-11-06 → 2017-10-23 (-14d) | 2017-11-10 → 2017-10-27 (-14d) |  |  |
| 12 | Test algos sur vrai data | 2017-11-14 → 2017-10-30 (-15d) | 2017-11-20 → 2017-11-03 (-17d) |  |  |
| 13 | Port algorithmes | 2017-11-21 → 2017-11-06 (-15d) | 2017-12-11 → 2017-11-10 (-31d) | 15d → 5d |  |
| 14 | Tests | 2017-12-12 → 2017-11-13 (-29d) | 2017-12-18 → 2017-11-17 (-31d) |  |  |
| 17 | Ecriture rapport | 2018-01-08 → 2017-12-18 (-21d) | 2018-01-12 → 2017-12-22 (-21d) |  |  |
| 18 | Rendu rapport | 2018-01-15 → 2018-01-03 (-12d) | 2018-01-15 → 2018-01-03 (-12d) |  |  |
